# Sales Force PA4

Schedule from MS Project, 2011-04-29 to 2011-12-19, costs in R$.

## Calendars

- Padrão_2011: Mon-Fri 09:00-12:00, 13:00-18:00; Sat-Sun off. Exceptions (off unless hours are given): 2011-06-23 (Corpus Christis), 2011-06-24 (Ponte Feriado), 2011-09-07 (Dia da Independência), 2011-10-12 (Dia das Crianças), 2011-11-02 (Finados), 2011-11-14 (Ponte Feriado), 2011-11-15 (Dia da Proclamação da República), 2011-12-08 (Aniversário Campinas), 2011-12-09 (Ponte Feriado).

## Resources

| Resource | Rate |
| --- | --- |
| Gerente de Projeto | 200 |
| Analista de Requisitos | 150 |
| Analista de Compras | 100 |
| Analista Desenvolvedor | 100 |
| Analista de Ambiente | 100 |
| Analista de Implantação | 100 |
| Analista de RH | 100 |

## Schedule

| ID | WBS | Task | Type | Duration | Start | Finish | Predecessors | Total slack | Constraint | Resources | Work | Cost |
| --- | --- | --- | --- | --- | --- | --- | --- | --- | --- | --- | --- | --- |
| 1 | 1 | **SALES FORCE** |  | 158d | 2011-04-29 | 2011-12-19 |  | 0d |  |  | 1712.2h | 217,520 |
| 3 | 1.1 | **Gerenciamento do Projeto** |  | 158d | 2011-04-29 | 2011-12-19 |  | 0d |  |  | 375h | 75,000 |
| 4 | 1.1.1 | **Iniciação** |  | 4d | 2011-04-29 | 2011-05-04 |  | 0d |  |  | 24h | 4,800 |
| 5 | 1.1.1.1 | Milestone - Aprovação do Termo de Abertura | milestone | 0d | 2011-04-29 | 2011-04-29 |  | 0d | start no earlier than 2011-04-29 |  |  |  |
| 6 | 1.1.1.2 | Revisar o Termo de Abertura |  | 1d | 2011-05-02 | 2011-05-02 | 5FS+1d | 0d |  | Gerente de Projeto | 8h | 1,600 |
| 7 | 1.1.1.3 | Identificar os Envolvidos e Preparar o Registro dos Envolvidos |  | 2d | 2011-05-03 | 2011-05-04 | 6 | 0d |  | Gerente de Projeto | 16h | 3,200 |
| 8 | 1.1.2 | **Planejamento** |  | 7d | 2011-05-05 | 2011-05-13 |  | 0d |  |  | 48h | 9,600 |
| 9 | 1.1.2.1 | Desenvolver o Plano de Gerenciamento do Projeto - Preliminar |  | 2d | 2011-05-05 | 2011-05-06 | 7 | 0d |  | Gerente de Projeto | 16h | 3,200 |
| 10 | 1.1.2.2 | Desenvolver o Plano de Gerenciamento do Projeto - Completo |  | 5d | 2011-05-09 | 2011-05-13 | 9 | 147d |  | Gerente de Projeto [80%] | 32h | 6,400 |
| 11 | 1.1.3 | **Execução, Monitoramento e Controle** |  | 150d | 2011-05-09 | 2011-12-15 |  | 2d |  |  | 263h | 52,600 |
| 12 | 1.1.3.1 | Gerenciar a Definição dos Requisitos da Solução |  | 25d | 2011-05-09 | 2011-06-10 | 25SS | 127d |  | Gerente de Projeto [20%] | 40h | 8,000 |
| 13 | 1.1.3.2 | Gerenciar a Análise e Contratação de Fornecedores |  | 13d | 2011-06-13 | 2011-07-01 | 34SS | 114d |  | Gerente de Projeto [15.4%] | 16h | 3,200 |
| 14 | 1.1.3.3 | Gerenciar a Implantação |  | 74d | 2011-06-27 | 2011-10-07 | 40SS | 45d |  | Gerente de Projeto [20.3%] | 120h | 24,000 |
| 15 | 1.1.3.4 | Gerenciar a Definição do Projeto Piloto |  | 5d | 2011-09-26 | 2011-09-30 | 58SS | 50d |  | Gerente de Projeto [30%] | 12h | 2,400 |
| 16 | 1.1.3.5 | Gerenciar a Iniciação do Projeto Piloto |  | 2d | 2011-10-10 | 2011-10-11 | 60SS | 43d |  | Gerente de Projeto [25%] | 4h | 800 |
| 17 | 1.1.3.6 | Gerenciar a Execução do Projeto Piloto |  | 29d | 2011-10-13 | 2011-11-25 | 61SS | 14d |  | Gerente de Projeto [15.1%] | 35h | 7,000 |
| 18 | 1.1.3.7 | Gerenciar os Treinamentos |  | 22d | 2011-11-10 | 2011-12-15 | 63SS | 2d |  | Gerente de Projeto [20.5%] | 36h | 7,200 |
| 19 | 1.1.4 | **Encerramento** |  | 14d | 2011-11-28 | 2011-12-19 |  | 0d |  |  | 40h | 8,000 |
| 20 | 1.1.4.1 | Gerenciar a Preparação do Relatório de Transição e Atualização da Documentação de Sistemas |  | 5d | 2011-11-28 | 2011-12-02 | 79SS | 9d |  | Gerente de Projeto [20%] | 8h | 1,600 |
| 21 | 1.1.4.2 | Gerenciar a Reunião de Transição para Operação de Vendas |  | 1d | 2011-12-16 | 2011-12-16 | 80SS | 1d |  | Gerente de Projeto [50%] | 4h | 800 |
| 22 | 1.1.4.3 | Preparar Relatório Final |  | 5d | 2011-12-12 | 2011-12-16 | 80FS-5d | 0d |  | Gerente de Projeto [50%] | 20h | 4,000 |
| 23 | 1.1.4.4 | Atualizar Ativos de Processos Organizacionais |  | 1d | 2011-12-19 | 2011-12-19 | 22 | 0d |  | Gerente de Projeto | 8h | 1,600 |
| 24 | 1.1.4.5 | Término do Projeto | milestone | 0d | 2011-12-19 | 2011-12-19 | 23, 22, 80 | 0d |  |  |  |  |
| 25 | 1.2 | **Definição dos Requisitos da Solução** |  | 25d | 2011-05-09 | 2011-06-10 |  | 0d |  |  | 240h | 30,000 |
| 26 | 1.2.1 | **Coleta de Requisitos** |  | 5d | 2011-05-09 | 2011-05-13 |  | 0d |  |  | 40h | 6,000 |
| 27 | 1.2.1.1 | Coletar Requisitos |  | 5d | 2011-05-09 | 2011-05-13 | 9 | 0d |  | Analista de Requisitos | 40h | 6,000 |

Notes:
- 9: Plano de Gerenciamento preliminar, com o objetivo de orientar o início das atividades de Definição dos Requisitos da Solução.
- 26: Deve considerar os requisitos das solução completa, incluindo: / - Software Servidor / - Software Cliente (instalado no terminal móvel) / - Interface de Integração Server<->ERP / - Características dos terminias e redes de acesso (GPRS, Wifi, etc)

| ID | WBS | Task | Type | Duration | Start | Finish | Predecessors | Total slack | Free slack | Resources | Work | Cost |
| --- | --- | --- | --- | --- | --- | --- | --- | --- | --- | --- | --- | --- |
| 28 | 1.2.2 | **Documento de Especificação Funcional** |  | 10d | 2011-05-16 | 2011-05-27 |  | 0d |  |  | 80h | 12,000 |
| 29 | 1.2.2.1 | Elaborar a Especificação Funcional |  | 9d | 2011-05-16 | 2011-05-26 | 27 | 0d |  | Analista de Requisitos | 72h | 10,800 |
| 30 | 1.2.2.2 | Revisar Especificação Funcional |  | 1d | 2011-05-27 | 2011-05-27 | 29 | 0d |  | Analista de Requisitos | 8h | 1,200 |
| 31 | 1.2.3 | **Documento de Especificação Técnica** |  | 15d | 2011-05-23 | 2011-06-10 |  | 0d |  |  | 120h | 12,000 |
| 32 | 1.2.3.1 | Elaborar a Especificação Técnica |  | 14d | 2011-05-23 | 2011-06-09 | 30FS-5d | 0d |  | Analista Desenvolvedor | 112h | 11,200 |
| 33 | 1.2.3.2 | Revisar a Especificação Técnica |  | 1d | 2011-06-10 | 2011-06-10 | 32 | 0d |  | Analista Desenvolvedor | 8h | 800 |
| 34 | 1.3 | **Análise e Contratação de Fornecedores** |  | 13d | 2011-06-13 | 2011-07-01 |  | 0d |  |  | 72h | 7,200 |
| 35 | 1.3.1 | Solicitar Proposta aos Fornecedores |  | 2d | 2011-06-13 | 2011-06-14 | 33 | 0d |  | Analista de Compras | 16h | 1,600 |
| 36 | 1.3.2 | Milestone - Recebimento das Propostas | milestone | 0d | 2011-06-20 | 2011-06-20 | 35FS+4d | 0d |  |  |  |  |
| 37 | 1.3.3 | Analisar Propostas Técnicas |  | 2d | 2011-06-21 | 2011-06-22 | 36 | 0d |  | Analista de Compras | 16h | 1,600 |
| 38 | 1.3.4 | Analisar Propostas Comerciais |  | 1d | 2011-06-27 | 2011-06-27 | 37 | 0d |  | Analista de Compras | 8h | 800 |
| 39 | 1.3.5 | Escolher e Contratar Fornecedores |  | 4d | 2011-06-28 | 2011-07-01 | 38 | 0d |  | Analista de Compras | 32h | 3,200 |
| 40 | 1.4 | **Implantação** |  | 74d | 2011-06-27 | 2011-10-07 |  | 10d | 0d |  | 660h | 66,000 |
| 41 | 1.4.1 | **Desenvolvimento** |  | 20d | 2011-06-27 | 2011-07-22 |  | 10d |  |  | 160h | 16,000 |
| 42 | 1.4.1.1 | Desenvolver Rotina de Interface Salesforce x ERP |  | 20d | 2011-06-27 | 2011-07-22 | 37 | 10d | 0d | Analista Desenvolvedor | 160h | 16,000 |
| 43 | 1.4.2 | **Auditoria dos Servidores** |  | 5d | 2011-07-11 | 2011-07-15 |  | 104d |  |  | 40h | 4,000 |
| 44 | 1.4.2.1 | Executar Auditoria nos Servidores |  | 5d | 2011-07-11 | 2011-07-15 | 42FS-10d | 104d |  | Analista de Ambiente | 40h | 4,000 |
| 45 | 1.4.3 | **Instalação da Solução** |  | 15d | 2011-08-01 | 2011-08-19 |  | 0d |  |  | 120h | 12,000 |
| 46 | 1.4.3.1 | Instalar e Configurar o Sofware no Servidor |  | 5d | 2011-08-01 | 2011-08-05 | 39FS+20d | 0d |  | Analista de Ambiente | 40h | 4,000 |
| 47 | 1.4.3.2 | Instalar e Configurar a Rotina de Interface |  | 5d | 2011-08-08 | 2011-08-12 | 42, 46 | 0d |  | Analista de Ambiente | 40h | 4,000 |
| 48 | 1.4.3.3 | Instalar e Configurar o Software nos Terminais Móveis de Teste |  | 5d | 2011-08-15 | 2011-08-19 | 39FS+20d, 47 | 0d |  | Analista de Ambiente | 40h | 4,000 |
| 49 | 1.4.4 | **Testes** |  | 34d | 2011-08-22 | 2011-10-07 |  | 0d |  |  | 340h | 34,000 |
| 50 | 1.4.4.1 | **Testes de Integração** |  | 14d | 2011-08-22 | 2011-09-09 |  | 0d |  |  | 140h | 14,000 |
| 51 | 1.4.4.1.1 | Executar os testes de Integração |  | 14d | 2011-08-22 | 2011-09-09 | 48 | 0d |  | Analista de Implantação | 112h | 11,200 |
| 52 | 1.4.4.1.2 | Corrigir falhas |  | 14d | 2011-08-22 | 2011-09-09 | 48 | 0d |  | Analista Desenvolvedor [25%] | 28h | 2,800 |

Notes:
- 28: Define o funcionamento da solução completa, incluindo: / - Software Servidor / - Software Cliente (instalado no terminal móvel) / - Interface de Integração Server<->ERP / - Características dos terminias e redes de acesso (GPRS, Wifi, etc)
- 31: Detalha as espcificações e requisitos técnicos de todos os componentes da solução, incluindo: / - Software Servidor / - Software Cliente (instalado no terminal móvel) / - Interface de Integração Server<->ERP / - Características dos terminias e redes de acesso (GPRS, Wifi, etc)
- 34: Contratação deve incluir: / - Fornecedor de SW Servidor e Cliente (instalado no terminal móvel) / - Terminais Móvies / - Plano de dados oferecido por operadoras de Telefonia Móvel
- 51: A execução dos testes de integração inclui a emissão de relatório ao final dos testes.

| ID | WBS | Task | Type | Duration | Start | Finish | Predecessors | Total slack | Free slack | Resources | Work | Cost |
| --- | --- | --- | --- | --- | --- | --- | --- | --- | --- | --- | --- | --- |
| 53 | 1.4.4.2 | **Testes de Homologação** |  | 20d | 2011-09-12 | 2011-10-07 |  | 0d |  |  | 200h | 20,000 |
| 54 | 1.4.4.2.1 | Executar os testes de Homologação |  | 20d | 2011-09-12 | 2011-10-07 | 50 | 0d |  | Analista de Implantação | 160h | 16,000 |
| 55 | 1.4.4.2.2 | Corrigir falhas |  | 20d | 2011-09-12 | 2011-10-07 | 50 | 0d |  | Analista Desenvolvedor [25%] | 40h | 4,000 |
| 56 | 1.5 | **Projeto Piloto** |  | 41d | 2011-09-26 | 2011-11-25 |  | 0d |  |  | 130h | 15,800 |
| 57 | 1.5.1 | **Definição do Projeto Piloto** |  | 5d | 2011-09-26 | 2011-09-30 |  | 36d |  |  | 40h | 6,000 |
| 58 | 1.5.1.1 | Definir Projeto Piloto |  | 5d | 2011-09-26 | 2011-09-30 | 53FS-10d | 36d | 0d | Analista de Requisitos | 40h | 6,000 |
| 59 | 1.5.2 | **Execução do Projeto Piloto** |  | 31d | 2011-10-10 | 2011-11-25 |  | 0d |  |  | 90h | 9,800 |
| 60 | 1.5.2.1 | Iniciar o Projeto Piloto |  | 2d | 2011-10-10 | 2011-10-11 | 49 | 0d |  | Analista de Implantação; Analista de Requisitos | 32h | 4,000 |
| 61 | 1.5.2.2 | Acompanhar Projeto Piloto |  | 29d | 2011-10-13 | 2011-11-25 | 60 | 0d |  | Analista de Implantação [25%] | 58h | 5,800 |
| 62 | 1.5.2.3 | Milestone - Projeto Piloto Concluído | milestone | 0d | 2011-11-25 | 2011-11-25 | 61 | 0d |  |  |  |  |
| 63 | 1.6 | **Treinamentos** |  | 22d | 2011-11-10 | 2011-12-15 |  | 2d | 0d |  | 187.2h | 18,720 |
| 64 | 1.6.1 | **Desenvolvimento dos Treinamentos** |  | 15d | 2011-11-10 | 2011-12-02 |  | 9d |  |  | 80h | 8,000 |
| 65 | 1.6.1.1 | Elaborar Treinamento |  | 10d | 2011-11-10 | 2011-11-25 | 61FS-10d | 9d | 0d | Analista de Implantação [50%] | 40h | 4,000 |
| 66 | 1.6.1.2 | Preparar Material e Infraestrutura |  | 5d | 2011-11-28 | 2011-12-02 | 65 | 9d |  | Analista de RH | 40h | 4,000 |
| 67 | 1.6.2 | **Preparação Terminais Móveis das Equipes de Vendas Externas** |  | 5d | 2011-11-28 | 2011-12-02 |  | 0d |  |  | 40h | 4,000 |
| 68 | 1.6.2.1 | Instalar e Configurar o Software nos Terminais Móveis dos Vendedores Externos |  | 5d | 2011-11-28 | 2011-12-02 | 56 | 0d |  | Analista de Ambiente | 40h | 4,000 |
| 69 | 1.6.3 | **Treinamento Equipe de Suporte/TI** |  | 3d | 2011-12-05 | 2011-12-07 |  | 0d |  |  | 28.8h | 2,880 |
| 70 | 1.6.3.1 | Executar Treinamento Teórico |  | 1d | 2011-12-05 | 2011-12-05 | 61, 67 | 0d |  | Analista de RH [20%]; Analista de Implantação | 9.6h | 960 |
| 71 | 1.6.3.2 | Executar Treinamento Prático |  | 2d | 2011-12-06 | 2011-12-07 | 70 | 0d |  | Analista de RH [20%]; Analista de Implantação | 19.2h | 1,920 |
| 72 | 1.6.4 | **Treinamento Funcionários Setor de Vendas (Internos)** |  | 2d | 2011-12-12 | 2011-12-13 |  | 0d |  |  | 19.2h | 1,920 |
| 73 | 1.6.4.1 | Executar Treinamento Teórico |  | 1d | 2011-12-12 | 2011-12-12 | 71 | 0d |  | Analista de Implantação; Analista de RH [20%] | 9.6h | 960 |
| 74 | 1.6.4.2 | Executar Treinamento Prático |  | 1d | 2011-12-13 | 2011-12-13 | 73 | 0d |  | Analista de Implantação; Analista de RH [20%] | 9.6h | 960 |
| 75 | 1.6.5 | **Treinamento Vendedores Externos** |  | 2d | 2011-12-14 | 2011-12-15 |  | 0d |  |  | 19.2h | 1,920 |
| 76 | 1.6.5.1 | Executar Treinamento Teórico |  | 1d | 2011-12-14 | 2011-12-14 | 74 | 0d |  | Analista de Implantação; Analista de RH [20%] | 9.6h | 960 |
| 77 | 1.6.5.2 | Executar Treinamento Prático |  | 1d | 2011-12-15 | 2011-12-15 | 76 | 0d |  | Analista de Implantação; Analista de RH [20%] | 9.6h | 960 |

Notes:
- 54: A execução dos testes de integração inclui a emissão de relatório ao final dos testes.
- 58: Definição de: / - Localidade / - Quantidade de vendedores / - Critérios de Avaloação / - Etc
- 68: Os terminais móveis das equipes de vendas externas serão entregues durante o treinamento e utilizados para o treinamento prático.
- 75: O treinamento das equipes de vendas externas será feito durante a Reunião Geral de Vendas, na segunda semana de Dezembro.

| ID | WBS | Task | Duration | Start | Finish | Predecessors | Total slack | Free slack | Resources | Work | Cost |
| --- | --- | --- | --- | --- | --- | --- | --- | --- | --- | --- | --- |
| 78 | 1.7 | **Transição para Operação de Vendas e Suporte** | 13d | 2011-11-28 | 2011-12-16 |  | 1d |  |  | 48h | 4,800 |
| 79 | 1.7.1 | Preparar Relatório de Transição e Atualizar Documentação de Sistemas | 5d | 2011-11-28 | 2011-12-02 | 56 | 9d | 0d | Analista de Implantação | 40h | 4,000 |
| 80 | 1.7.2 | Efetuar Transição para Operação de Vendas e Suporte | 1d | 2011-12-16 | 2011-12-16 | 77 | 0d |  | Analista de Implantação | 8h | 800 |
